ID,Outline Level,Task Name,Duration,Start,Finish,Predecessors,Resource Names
1,1,Blood Donor Management System (Project Summary),56 days,Thu 08/27/26,Thu 11/12/26,,
2,2,Phase 1: Project Planning and Requirements,4 days,Thu 08/27/26,Tue 09/01/26,,
3,3,"Conduct requirements analysis (donor, recipient roles, features, constraints)",2 days,Thu 08/27/26,Fri 08/28/26,,
4,3,"Define project scope, objectives and deliverables",1 day,Thu 08/27/26,Thu 08/27/26,,
5,3,Document functional and non-functional requirements (SRS),2 days,Fri 08/28/26,Mon 08/31/26,3,
6,3,Feasibility analysis and tech-stack decision (FastAPI + PostgreSQL + Flutter),1 day,Fri 08/28/26,Fri 08/28/26,4,
7,3,"Develop use cases and use-case diagram (donor, recipient, chat, requests)",1 day,Mon 08/31/26,Mon 08/31/26,3,
8,3,Conduct risk assessment and mitigation plan,1 day,Mon 08/31/26,Mon 08/31/26,4,
9,3,Build WBS and baseline project schedule in Microsoft Project,1 day,Tue 09/01/26,Tue 09/01/26,5,
10,3,"Set up Git repository, branching strategy and issue tracker",1 day,Thu 08/27/26,Thu 08/27/26,,
11,3,"Define coding standards (Python/Dart style, folder structure, API conventions)",1 day,Fri 08/28/26,Fri 08/28/26,10,
12,3,Milestone: Phase 1 complete,0 days,Tue 09/01/26,Tue 09/01/26,"9,7,8,11",
13,2,Phase 2: Database Design,4 days,Tue 09/01/26,Fri 09/04/26,,
14,3,"Design ER diagram (users, blood requests, emergency requests, conversations, messages)",2 days,Tue 09/01/26,Wed 09/02/26,5,
15,3,"Normalize schema and define constraints, CHECK rules, foreign keys and updated_at triggers",1 day,Wed 09/02/26,Wed 09/02/26,14,
16,3,Write PostgreSQL migration scripts (001-005) and migration runner,1 day,Thu 09/03/26,Thu 09/03/26,15,
17,3,"Define indexes for donor search (blood group, city, area)",1 day,Thu 09/03/26,Thu 09/03/26,15,
18,3,"Seed database with test donors, recipients and requests",1 day,Fri 09/04/26,Fri 09/04/26,16,
19,3,Milestone: Database design complete,0 days,Fri 09/04/26,Fri 09/04/26,"16,17,18",
20,2,Phase 3: Backend Development (FastAPI),7 days,Wed 09/02/26,Thu 09/10/26,,
21,3,"Set up FastAPI project, environment config and async PostgreSQL connection pool (asyncpg)",1 day,Wed 09/02/26,Wed 09/02/26,6,
22,3,Implement registration and login with JWT and bcrypt password hashing,2 days,Thu 09/03/26,Fri 09/04/26,"21,16",
23,3,Implement auth dependencies and protected-route middleware,1 day,Fri 09/04/26,Fri 09/04/26,22,
24,3,Implement user profile endpoints (get / update profile),1 day,Mon 09/07/26,Mon 09/07/26,23,
25,3,Implement donor search endpoint (filter by blood group and location),1 day,Mon 09/07/26,Mon 09/07/26,"23,17",
26,3,"Implement blood-request CRUD endpoints (create, list, my requests, update, delete)",2 days,Mon 09/07/26,Tue 09/08/26,23,
27,3,Implement conversations and messaging endpoints,2 days,Tue 09/08/26,Wed 09/09/26,23,
28,3,Add request validation schemas (Pydantic) and error handling,1 day,Wed 09/09/26,Wed 09/09/26,"26,27",
29,3,Test APIs via Swagger/Postman and document endpoints,1 day,Thu 09/10/26,Thu 09/10/26,"24,25,28",
30,3,Milestone: Backend development complete,0 days,Thu 09/10/26,Thu 09/10/26,29,
31,2,Phase 4: Frontend Development (Flutter Mobile App),17 days,Fri 10/02/26,Mon 10/26/26,,
32,3,Design UI/UX wireframes and app theme,2 days,Fri 10/02/26,Mon 10/05/26,30,
33,3,"Set up Flutter project, app shell, navigation and providers",2 days,Mon 10/05/26,Tue 10/06/26,32,
34,3,"Implement API client, config, storage service and error handling",2 days,Tue 10/06/26,Wed 10/07/26,33,
35,3,Build launch splash and onboarding screens,1 day,Wed 10/07/26,Wed 10/07/26,33,
36,3,Build login and registration screens with auth provider,2 days,Thu 10/08/26,Fri 10/09/26,34,
37,3,Build home shell with bottom navigation,1 day,Fri 10/09/26,Fri 10/09/26,36,
38,3,Build profile and edit-profile screens,2 days,Mon 10/12/26,Tue 10/13/26,37,
39,3,Build donor search and listing screen,2 days,Tue 10/13/26,Wed 10/14/26,37,
40,3,"Build blood-request list, detail and create screens",3 days,Thu 10/15/26,Mon 10/19/26,37,
41,3,Build conversations list and chat thread screens,4 days,Mon 10/19/26,Thu 10/22/26,37,
42,3,"UI polish, common widgets, loading and empty states",1 day,Fri 10/23/26,Fri 10/23/26,"38,39,40,41",
43,3,Integrate all screens with backend and fix integration issues,2 days,Fri 10/23/26,Mon 10/26/26,"38,39,40,41",
44,3,Milestone: Frontend development complete,0 days,Mon 10/26/26,Mon 10/26/26,"42,43",
45,2,Phase 5: Testing,8 days,Tue 10/27/26,Thu 11/05/26,,
46,3,"Prepare test plan, test cases and test data",1 day,Tue 10/27/26,Tue 10/27/26,44,
47,3,"Test authentication, JWT and protected routes",1 day,Wed 10/28/26,Wed 10/28/26,46,
48,3,Test profile and donor search (blood group / location filters),1 day,Wed 10/28/26,Wed 10/28/26,46,
49,3,"Test blood-request lifecycle (create, update, resolve, delete)",1 day,Thu 10/29/26,Thu 10/29/26,46,
50,3,Test chat: conversations and messaging,1 day,Thu 10/29/26,Thu 10/29/26,46,
51,3,"Test security and data privacy (input validation, unauthorized access)",1 day,Fri 10/30/26,Fri 10/30/26,47,
52,3,"Test on multiple Android devices, screen sizes and poor network",1 day,Fri 10/30/26,Fri 10/30/26,46,
53,3,Run end-to-end tests across app and backend,1 day,Mon 11/02/26,Mon 11/02/26,"48,49,50,51,52",
54,3,Fix mobile-app defects from test cycle,2 days,Tue 11/03/26,Wed 11/04/26,53,
55,3,Fix backend defects from test cycle,2 days,Tue 11/03/26,Wed 11/04/26,53,
56,3,Regression testing and final acceptance testing,1 day,Thu 11/05/26,Thu 11/05/26,"54,55",
57,3,Milestone: Testing sign-off,0 days,Thu 11/05/26,Thu 11/05/26,56,
58,2,Phase 6: Backend Deployment (Render) and Handover,6 days,Thu 11/05/26,Thu 11/12/26,,
59,3,Create production PostgreSQL database on Render,1 day,Thu 11/05/26,Thu 11/05/26,55,
60,3,"Create Render web service and configure environment variables (DB, JWT)",1 day,Fri 11/06/26,Fri 11/06/26,59,
61,3,Configure start command to run migrations on deploy and verify production schema,1 day,Fri 11/06/26,Fri 11/06/26,60,
62,3,Deploy FastAPI backend to Render (HTTPS) and set health check,1 day,Mon 11/09/26,Mon 11/09/26,"61,57",
63,3,Point app to Render API and build signed Android release (APK),1 day,Tue 11/10/26,Tue 11/10/26,62,
64,3,"Run production smoke tests (register, search, request, chat)",1 day,Tue 11/10/26,Tue 11/10/26,62,
65,3,Set up keep-alive cron job (GitHub Actions) to prevent Render free-tier sleep,1 day,Tue 11/10/26,Tue 11/10/26,62,
66,3,Milestone: Deployment complete,0 days,Tue 11/10/26,Tue 11/10/26,"63,64,65",
67,3,"Write documentation (Render deployment guide, Android build guide, API, user guide)",3 days,Mon 11/09/26,Wed 11/11/26,57,
68,3,Write final project report and prepare demonstration,2 days,Wed 11/11/26,Thu 11/12/26,"67,66",
69,3,Milestone: Final project submission,0 days,Thu 11/12/26,Thu 11/12/26,68,
